# FR_1673_02_02

Schedule from MS Project, 2017-11-13 to 2018-08-21.
SGI

## Calendars

- Standard: Mon-Fri 08:00-12:00, 13:00-17:00; Sat-Sun off.

## Resources

| Resource |
| --- |
| Gestionnaire de projet |
| Technicien de projet |
| Directeur Achat |
| Acheteur |
| Inégnieur Jr |
| Inégnieur Sr |
| Marketing |
| Directeur Qualité |
| Inspecteur Qualité |
| Exécutif |
| Responsable Production |
| Gestionnaire des Ressources Humaines |
| Legal |

## Schedule

| ID | WBS | Task | Type | Duration | Start | Finish | Predecessors | Total slack | Free slack | Constraint | Resources | Work |
| --- | --- | --- | --- | --- | --- | --- | --- | --- | --- | --- | --- | --- |
| 1 | 1 | Début de projet | milestone | 0d | 2017-11-13 | 2017-11-13 |  | 202d |  |  |  |  |
| 2 | 2 | **Initiation** |  | 6d | 2017-11-13 | 2017-11-21 |  | 6d |  |  |  | 96h |
| 3 | 2.1 | Compléter l'étude de cas |  | 5d | 2017-11-13 | 2017-11-17 |  | 196d | 0d |  | Marketing; Inégnieur Sr | 80h |
| 4 | 2.2 | Présenter l'étude de cas au committé exécutif |  | 1d | 2017-11-20 | 2017-11-20 | 3 | 196d |  |  | Inégnieur Sr; Marketing | 16h |
| 5 | 2.3 | Approbation de l'étude de cas | milestone | 0d | 2017-11-21 | 2017-11-21 |  | 0d |  | start no earlier than 2017-11-21 | Exécutif |  |
| 6 | 3 | **Définition** |  | 21d | 2017-11-21 | 2017-12-19 |  | 0d |  |  |  | 480h |
| 7 | 3.1 | Préparer la charte de projet |  | 10d | 2017-11-21 | 2017-12-04 | 5 | 0d |  |  | Gestionnaire de projet; Technicien de projet | 160h |
| 8 | 3.2 | Approuver la charte de projet |  | 5d | 2017-12-05 | 2017-12-11 | 7 | 0d |  |  | Exécutif | 40h |
| 9 | 3.3 | Développer l'équipe de travail |  | 5d | 2017-12-12 | 2017-12-18 | 8 | 0d |  |  | Directeur Qualité; Exécutif; Gestionnaire de projet; Inégnieur Sr; Technicien de projet | 200h |
| 10 | 3.4 | Procéder à la rencontre de démarrage du projet |  | 1d | 2017-12-19 | 2017-12-19 | 9 | 0d |  |  | Acheteur; Directeur Achat; Directeur Qualité; Exécutif; Gestionnaire de projet; Inégnieur Jr; Inégnieur Sr; Inspecteur Qualité; Marketing; Technicien de projet | 80h |
| 11 | 4 | **Planification du projet** |  | 144d | 2017-12-20 | 2018-07-09 |  | 0d |  |  |  | 7440h |
| 12 | 4.1 | **Prototype 1** |  | 77d | 2017-12-20 | 2018-04-05 |  | 0d |  |  |  | 2480h |
| 13 | 4.1.1 | **Approvisionnement** |  | 25d | 2017-12-20 | 2018-01-23 |  | 140d |  |  |  | 360h |
| 14 | 4.1.1.1 | Développer les plans de matières premières |  | 5d | 2017-12-20 | 2017-12-26 | 10 | 170d |  |  | Acheteur; Inégnieur Sr | 80h |
| 15 | 4.1.1.2 | Faire un appel d'offre sur le marché |  | 15d | 2017-12-27 | 2018-01-16 |  | 135d | 0d | start no earlier than 2017-12-27 | Acheteur | 120h |
| 16 | 4.1.1.3 | Sélectionner le fournisseur |  | 5d | 2018-01-17 | 2018-01-23 | 15 | 135d | 0d |  | Acheteur; Directeur Achat; Gestionnaire de projet; Inégnieur Sr | 160h |
| 17 | 4.1.2 | **Ingénierie de produit** |  | 20d | 2017-12-20 | 2018-01-16 |  | 0d |  |  |  | 200h |
| 18 | 4.1.2.1 | Développer le design préliminaire |  | 10d | 2017-12-20 | 2018-01-02 | 10 | 0d |  |  | Inégnieur Jr | 80h |
| 19 | 4.1.2.2 | Compléter l'étude de faisabilité |  | 5d | 2018-01-03 | 2018-01-09 | 18 | 155d | 0d |  | Inégnieur Jr; Inégnieur Sr | 80h |
| 20 | 4.1.2.3 | Élaborer le processus de fabrication du prototype |  | 5d | 2018-01-10 | 2018-01-16 | 19 | 155d |  |  | Inégnieur Sr | 40h |
| 21 | 4.1.3 | **Production** |  | 52d | 2018-01-24 | 2018-04-05 |  | 98d |  |  |  | 1576h |
| 22 | 4.1.3.1 | Assembler le matériel nécessaire |  | 15d | 2018-01-24 | 2018-02-13 | 16 | 135d |  |  | Gestionnaire de projet; Inégnieur Jr; Technicien de projet; Acheteur; Responsable Production | 600h |
| 23 | 4.1.3.2 | Développer le processus de production |  | 5d | 2018-02-14 | 2018-02-20 |  | 98d | 0d | start no earlier than 2018-02-14 | Inégnieur Jr; Inégnieur Sr; Responsable Production; Technicien de projet | 160h |
| 24 | 4.1.3.3 | Faire les changements nécessaires à la production |  | 10d | 2018-02-21 | 2018-03-06 | 23 | 98d | 0d |  | Inégnieur Jr; Responsable Production | 160h |
| 25 | 4.1.3.4 | Compléter le prototype |  | 20d | 2018-03-07 | 2018-04-03 | 24 | 98d | 0d |  | Gestionnaire de projet; Inégnieur Jr; Responsable Production; Technicien de projet | 640h |

| ID | WBS | Task | Type | Duration | Start | Finish | Predecessors | Total slack | Free slack | Resources | Work |
| --- | --- | --- | --- | --- | --- | --- | --- | --- | --- | --- | --- |
| 26 | 4.1.3.5 | **Qualité** |  | 2d | 2018-04-04 | 2018-04-05 |  | 98d |  |  | 16h |
| 27 | 4.1.3.5.1 | Inspecter le produit |  | 2d | 2018-04-04 | 2018-04-05 | 25 | 98d | 0d | Inspecteur Qualité | 16h |
| 28 | 4.1.3.5.2 | Approuver le produit pour expédition au client | milestone | 0d | 2018-04-05 | 2018-04-05 | 27 | 98d |  | Inspecteur Qualité |  |
| 29 | 4.1.4 | **Marketing** |  | 21d | 2018-01-03 | 2018-01-31 |  | 0d |  |  | 344h |
| 30 | 4.1.4.1 | Élaborer le plan marketing |  | 10d | 2018-01-03 | 2018-01-16 | 18 | 0d |  | Gestionnaire de projet; Marketing | 160h |
| 31 | 4.1.4.2 | Présenter le prototype au client |  | 1d | 2018-01-17 | 2018-01-17 | 30 | 0d |  | Gestionnaire de projet; Inégnieur Sr; Marketing | 24h |
| 32 | 4.1.4.3 | Aviser des changements recquis |  | 5d | 2018-01-18 | 2018-01-24 | 31 | 0d |  | Gestionnaire de projet; Inégnieur Sr | 80h |
| 33 | 4.1.4.4 | Compléter le rapport du feedback client |  | 5d | 2018-01-25 | 2018-01-31 | 32 | 144d |  | Marketing; Inégnieur Sr | 80h |
| 34 | 4.2 | **Prototype 2** |  | 77d | 2018-01-25 | 2018-05-11 |  | 0d |  |  | 2480h |
| 35 | 4.2.1 | **Approvisionnement** |  | 25d | 2018-01-25 | 2018-02-28 |  | 0d |  |  | 360h |
| 36 | 4.2.1.1 | Développer les plans de matières premières |  | 5d | 2018-01-25 | 2018-01-31 | 32 | 0d |  | Acheteur; Inégnieur Sr | 80h |
| 37 | 4.2.1.2 | Faire un appel d'offre sur le marché |  | 15d | 2018-02-01 | 2018-02-21 | 36 | 0d |  | Acheteur | 120h |
| 38 | 4.2.1.3 | Sélectionner le fournisseur |  | 5d | 2018-02-22 | 2018-02-28 | 37 | 0d |  | Acheteur; Directeur Achat; Gestionnaire de projet; Inégnieur Sr | 160h |
| 39 | 4.2.2 | **Ingénierie de produit** |  | 20d | 2018-01-25 | 2018-02-21 |  | 129d |  |  | 200h |
| 40 | 4.2.2.1 | Développer le design préliminaire |  | 10d | 2018-01-25 | 2018-02-07 | 32 | 129d | 0d | Inégnieur Jr | 80h |
| 41 | 4.2.2.2 | Compléter l'étude de faisabilité |  | 5d | 2018-02-08 | 2018-02-14 | 40 | 129d | 0d | Inégnieur Jr; Inégnieur Sr | 80h |
| 42 | 4.2.2.3 | Élaborer le processus de fabrication du prototype |  | 5d | 2018-02-15 | 2018-02-21 | 41 | 129d |  | Inégnieur Sr | 40h |
| 43 | 4.2.3 | **Production** |  | 52d | 2018-03-01 | 2018-05-11 |  | 72d |  |  | 1576h |
| 44 | 4.2.3.1 | Assembler le matériel nécessaire |  | 15d | 2018-03-01 | 2018-03-21 | 38 | 72d | 0d | Gestionnaire de projet; Inégnieur Jr; Technicien de projet; Acheteur; Responsable Production | 600h |
| 45 | 4.2.3.2 | Développer le processus de production |  | 5d | 2018-03-22 | 2018-03-28 | 44 | 72d | 0d | Inégnieur Jr; Inégnieur Sr; Responsable Production; Technicien de projet | 160h |
| 46 | 4.2.3.3 | Faire les changements nécessaires à la production |  | 10d | 2018-03-29 | 2018-04-11 | 45 | 72d | 0d | Inégnieur Jr; Responsable Production | 160h |
| 47 | 4.2.3.4 | Compléter le prototype |  | 20d | 2018-04-12 | 2018-05-09 | 46 | 72d | 0d | Gestionnaire de projet; Inégnieur Jr; Responsable Production; Technicien de projet | 640h |
| 48 | 4.2.3.5 | **Qualité** |  | 2d | 2018-05-10 | 2018-05-11 |  | 72d |  |  | 16h |
| 49 | 4.2.3.5.1 | Inspecter le produit |  | 2d | 2018-05-10 | 2018-05-11 | 47 | 72d | 0d | Inspecteur Qualité | 16h |
| 50 | 4.2.3.5.2 | Approuver le produit pour expédition au client | milestone | 0d | 2018-05-11 | 2018-05-11 | 49 | 72d |  | Inspecteur Qualité |  |

| ID | WBS | Task | Type | Duration | Start | Finish | Predecessors | Total slack | Free slack | Resources | Work |
| --- | --- | --- | --- | --- | --- | --- | --- | --- | --- | --- | --- |
| 51 | 4.2.4 | **Marketing** |  | 21d | 2018-03-01 | 2018-03-29 |  | 0d |  |  | 344h |
| 52 | 4.2.4.1 | Élaborer le plan marketing |  | 10d | 2018-03-01 | 2018-03-14 | 38 | 0d |  | Gestionnaire de projet; Marketing | 160h |
| 53 | 4.2.4.2 | Présenter le prototype au client |  | 1d | 2018-03-15 | 2018-03-15 | 52 | 0d |  | Gestionnaire de projet; Inégnieur Sr; Marketing | 24h |
| 54 | 4.2.4.3 | Aviser des changements recquis |  | 5d | 2018-03-16 | 2018-03-22 | 53 | 0d |  | Gestionnaire de projet; Inégnieur Sr | 80h |
| 55 | 4.2.4.4 | Compléter le rapport du feedback client |  | 5d | 2018-03-23 | 2018-03-29 | 54 | 103d |  | Marketing; Inégnieur Sr | 80h |
| 56 | 4.3 | **Prototype Final** |  | 77d | 2018-03-23 | 2018-07-09 |  | 0d |  |  | 2480h |
| 57 | 4.3.1 | **Approvisionnement** |  | 25d | 2018-03-23 | 2018-04-26 |  | 31d |  |  | 360h |
| 58 | 4.3.1.1 | Développer les plans de matières premières |  | 5d | 2018-03-23 | 2018-03-29 | 54 | 31d | 0d | Acheteur; Inégnieur Sr | 80h |
| 59 | 4.3.1.2 | Faire un appel d'offre sur le marché |  | 15d | 2018-03-30 | 2018-04-19 | 58 | 31d | 0d | Acheteur | 120h |
| 60 | 4.3.1.3 | Sélectionner le fournisseur |  | 5d | 2018-04-20 | 2018-04-26 | 59 | 31d | 0d | Acheteur; Directeur Achat; Gestionnaire de projet; Inégnieur Sr | 160h |
| 61 | 4.3.2 | **Ingénierie de produit** |  | 20d | 2018-03-23 | 2018-04-19 |  | 88d |  |  | 200h |
| 62 | 4.3.2.1 | Développer le design préliminaire |  | 10d | 2018-03-23 | 2018-04-05 | 54 | 88d | 0d | Inégnieur Jr | 80h |
| 63 | 4.3.2.2 | Compléter l'étude de faisabilité |  | 5d | 2018-04-06 | 2018-04-12 | 62 | 88d | 0d | Inégnieur Jr; Inégnieur Sr | 80h |
| 64 | 4.3.2.3 | Élaborer le processus de fabrication du prototype |  | 5d | 2018-04-13 | 2018-04-19 | 63 | 88d |  | Inégnieur Sr | 40h |
| 65 | 4.3.3 | **Production** |  | 50d | 2018-04-27 | 2018-07-05 |  | 31d |  |  | 1560h |
| 66 | 4.3.3.1 | Assembler le matériel nécessaire |  | 15d | 2018-04-27 | 2018-05-17 | 60 | 31d | 0d | Gestionnaire de projet; Inégnieur Jr; Technicien de projet; Acheteur; Responsable Production | 600h |
| 67 | 4.3.3.2 | Développer le processus de production |  | 5d | 2018-05-18 | 2018-05-24 | 66 | 31d | 0d | Inégnieur Jr; Inégnieur Sr; Responsable Production; Technicien de projet | 160h |
| 68 | 4.3.3.3 | Faire les changements nécessaires à la production |  | 10d | 2018-05-25 | 2018-06-07 | 67 | 31d | 0d | Inégnieur Jr; Responsable Production | 160h |
| 69 | 4.3.3.4 | Compléter le prototype |  | 20d | 2018-06-08 | 2018-07-05 | 68 | 31d | 0d | Gestionnaire de projet; Inégnieur Jr; Responsable Production; Technicien de projet | 640h |
| 70 | 4.3.4 | **Qualité** |  | 2d | 2018-07-06 | 2018-07-09 |  | 31d |  |  | 16h |
| 71 | 4.3.4.1 | Inspecter le produit |  | 2d | 2018-07-06 | 2018-07-09 | 69 | 31d | 0d | Inspecteur Qualité | 16h |
| 72 | 4.3.4.2 | Approuver le produit pour expédition au client | milestone | 0d | 2018-07-09 | 2018-07-09 | 71 | 31d |  | Inspecteur Qualité |  |
| 73 | 4.3.5 | **Marketing** |  | 21d | 2018-03-23 | 2018-04-20 |  | 0d |  |  | 344h |
| 74 | 4.3.5.1 | Élaborer le plan marketing |  | 10d | 2018-03-23 | 2018-04-05 | 54 | 0d |  | Gestionnaire de projet; Marketing | 160h |
| 75 | 4.3.5.2 | Présenter le prototype au client |  | 1d | 2018-04-06 | 2018-04-06 | 74 | 0d |  | Gestionnaire de projet; Inégnieur Sr; Marketing | 24h |
| 76 | 4.3.5.3 | Aviser des changements recquis |  | 5d | 2018-04-09 | 2018-04-13 | 75 | 0d |  | Gestionnaire de projet; Inégnieur Sr | 80h |
| 77 | 4.3.5.4 | Compléter le rapport du feedback client |  | 5d | 2018-04-16 | 2018-04-20 | 76 | 0d |  | Marketing; Inégnieur Sr | 80h |
| 78 | 4.3.6 | Approbation du client du prototype et transfer à la production finale | milestone | 0d | 2018-04-20 | 2018-04-20 | 77 | 0d |  | Directeur Achat; Directeur Qualité; Exécutif; Gestionnaire de projet; Inégnieur Sr; Responsable Production |  |

| ID | WBS | Task | Type | Duration | Start | Finish | Predecessors | Total slack | Free slack | Resources | Work |
| --- | --- | --- | --- | --- | --- | --- | --- | --- | --- | --- | --- |
| 79 | 5 | **Execution** |  | 87d | 2018-04-23 | 2018-08-21 |  | 0d |  |  | 4672h |
| 80 | 5.1 | **Ingénierie de produit** |  | 60d | 2018-04-23 | 2018-07-13 |  | 27d |  |  | 1480h |
| 81 | 5.1.1 | Finaliser les plans de produits |  | 15d | 2018-04-23 | 2018-05-11 | 78 | 27d | 0d | Inégnieur Jr; Inégnieur Sr | 240h |
| 82 | 5.1.2 | Préprarer la cédule de maintenance |  | 10d | 2018-05-14 | 2018-05-25 | 81 | 27d | 0d | Inégnieur Jr; Technicien de projet | 160h |
| 83 | 5.1.3 | Élaborer le processus du fabrication |  | 20d | 2018-05-28 | 2018-06-22 | 82 | 27d | 0d | Inégnieur Jr; Responsable Production; Technicien de projet | 480h |
| 84 | 5.1.4 | Formation des techniciens procédés |  | 15d | 2018-06-25 | 2018-07-13 | 83 | 27d |  | Inégnieur Jr; Inégnieur Sr; Technicien de projet | 360h |
| 85 | 5.1.5 | Compléter fichier du produit pour transfer à la production |  | 10d | 2018-06-25 | 2018-07-06 | 83 | 32d |  | Directeur Qualité; Gestionnaire de projet; Inégnieur Sr | 240h |
| 86 | 5.2 | **Qualité** |  | 16d | 2018-04-23 | 2018-05-14 |  | 61d |  |  | 408h |
| 87 | 5.2.1 | Compléter l'approbation client du produit |  | 1d | 2018-04-23 | 2018-04-23 | 78 | 61d | 0d | Directeur Qualité | 8h |
| 88 | 5.2.2 | Élaborer les critères d'inspection |  | 5d | 2018-04-24 | 2018-04-30 | 87 | 61d | 0d | Directeur Qualité; Inspecteur Qualité | 80h |
| 89 | 5.2.3 | Formation des inspecteurs qualités |  | 10d | 2018-05-01 | 2018-05-14 | 88 | 61d | 29d | Directeur Qualité; Inspecteur Qualité; Technicien de projet; Gestionnaire des Ressources Humaines | 320h |
| 90 | 5.3 | **Ressources humaines** |  | 30d | 2018-04-23 | 2018-06-01 |  | 57d |  |  | 1120h |
| 91 | 5.3.1 | Embaucher les nouveaux opérateurs |  | 20d | 2018-04-23 | 2018-05-18 | 78 | 57d | 0d | Gestionnaire des Ressources Humaines | 160h |
| 92 | 5.3.2 | Développer le plan de formation |  | 15d | 2018-04-23 | 2018-05-11 | 91SS | 57d | 0d | Gestionnaire des Ressources Humaines; Gestionnaire de projet; Inégnieur Sr; Responsable Production | 480h |
| 93 | 5.3.3 | Former les nouveaux opérateurs |  | 15d | 2018-05-14 | 2018-06-01 | 92 | 57d |  | Gestionnaire des Ressources Humaines; Inégnieur Jr; Inspecteur Qualité; Responsable Production | 480h |
| 94 | 5.4 | **Approvisionnement** |  | 87d | 2018-04-23 | 2018-08-21 |  | 0d |  |  | 1504h |
| 95 | 5.4.1 | Développer les plans finaux des requis de matières premières |  | 10d | 2018-04-23 | 2018-05-04 | 78 | 0d |  | Acheteur; Directeur Achat | 160h |
| 96 | 5.4.2 | Faire appel d'offres |  | 15d | 2018-05-07 | 2018-05-25 | 95 | 0d |  | Acheteur | 120h |
| 97 | 5.4.3 | Choisir les fournisseurs |  | 15d | 2018-05-28 | 2018-06-15 | 96 | 0d |  | Directeur Achat; Directeur Qualité; Gestionnaire de projet; Inégnieur Sr; Responsable Production | 600h |
| 98 | 5.4.4 | Développer le contrat |  | 20d | 2018-06-18 | 2018-07-13 | 97 | 0d |  | Acheteur | 160h |
| 99 | 5.4.5 | Revoir le contrat par le département législatif |  | 20d | 2018-07-16 | 2018-08-10 | 98 | 0d |  | Legal | 160h |
| 100 | 5.4.6 | Signer et approuver le contrat |  | 5d | 2018-08-13 | 2018-08-17 | 99 | 0d |  | Directeur Achat; Directeur Qualité; Exécutif; Gestionnaire de projet; Inégnieur Sr; Responsable Production | 240h |
| 101 | 5.4.7 | Mettre en place le plan d'approvisionnement |  | 2d | 2018-08-20 | 2018-08-21 | 100, 105 | 0d |  | Acheteur; Gestionnaire de projet; Responsable Production; Technicien de projet | 64h |
| 102 | 5.5 | **Département de production** |  | 72d | 2018-05-11 | 2018-08-21 |  | 0d |  |  | 160h |
| 103 | 5.5.1 | Accepter le design de produit | milestone | 0d | 2018-05-11 | 2018-05-11 | 81 | 72d |  | Responsable Production |  |
| 104 | 5.5.2 | Développer plan de production |  | 10d | 2018-06-25 | 2018-07-06 | 83, 89 | 32d |  | Responsable Production; Inégnieur Jr | 160h |
| 105 | 5.5.3 | Approuver le plan d'approvisionnement | milestone | 0d | 2018-08-17 | 2018-08-17 | 100 | 0d |  | Responsable Production |  |
| 106 | 5.5.4 | Projet transféré aux opérations et début de la prouction | milestone | 0d | 2018-08-21 | 2018-08-21 | 105, 101, 93 | 0d |  | Responsable Production |  |
| 107 | 6 | Fin de projet | milestone | 0d | 2017-11-13 | 2017-11-13 |  | 202d |  |  |  |
