# Projet Complet

Schedule from MS Project, 2017-11-13 to 2019-03-26.
SGI

## Calendars

- Standard: Mon-Fri 08:00-12:00, 13:00-17:00; Sat-Sun off.

## Resources

| Resource |
| --- |
| Gestionnaire de projet |
| Technicien de projet |
| Directeur Achat |
| Acheteur |
| Inégnieur Jr |
| Inégnieur Sr |
| Marketing |
| Directeur Qualité |
| Inspecteur Qualité |
| Exécutif |
| Responsable Production |
| Gestionnaire des Ressources Humaines |
| Legal |

## Schedule

| ID | WBS | Task | Type | Duration | Start | Finish | Predecessors | Baseline start | Baseline finish | Baseline duration | Baseline 1 start | Baseline 1 finish | Total slack | Free slack | Deadline | Resources | Work |
| --- | --- | --- | --- | --- | --- | --- | --- | --- | --- | --- | --- | --- | --- | --- | --- | --- | --- |
| 1 | 1 | Début de projet | milestone | 0d | 2017-11-13 | 2017-11-13 |  | 2017-11-13 | 2017-11-13 | 0d | 2017-11-13 | 2017-11-13 | 0d |  |  |  |  |
| 2 | 2 | **Initiation** |  | 6d | 2017-11-13 | 2017-11-20 |  | 2017-11-13 | 2017-11-20 | 6d | 2017-11-13 | 2017-11-20 | 0d |  |  |  | 96h |
| 3 | 2.1 | Compléter l'étude de cas |  | 5d | 2017-11-13 | 2017-11-17 | 1 | 2017-11-13 | 2017-11-17 | 5d | 2017-11-13 | 2017-11-17 | 0d |  |  | Marketing; Inégnieur Sr | 80h |
| 4 | 2.2 | Présenter l'étude de cas au committé exécutif |  | 1d | 2017-11-20 | 2017-11-20 | 3 | 2017-11-20 | 2017-11-20 | 1d | 2017-11-20 | 2017-11-20 | 0d |  |  | Inégnieur Sr; Marketing | 16h |
| 5 | 2.3 | Approbation de l'étude de cas | milestone | 0d | 2017-11-20 | 2017-11-20 | 4 | 2017-11-20 | 2017-11-20 | 0d | 2017-11-20 | 2017-11-20 | 0d |  |  | Exécutif |  |
| 6 | 3 | **Définition** |  | 11d | 2017-11-21 | 2017-12-05 |  | 2017-11-21 | 2017-12-19 | 21d | 2017-11-21 | 2017-12-05 | 0d |  |  |  | 376h |
| 7 | 3.1 | Préparer la charte de projet |  | 5d | 2017-11-21 | 2017-11-27 | 5 | 2017-11-21 | 2017-12-04 | 10d | 2017-11-21 | 2017-11-27 | 0d |  |  | Gestionnaire de projet; Technicien de projet | 80h |
| 8 | 3.2 | Approuver la charte de projet |  | 2d | 2017-11-28 | 2017-11-29 | 7 | 2017-12-05 | 2017-12-11 | 5d | 2017-11-28 | 2017-11-29 | 3d |  |  | Exécutif | 16h |
| 9 | 3.3 | Développer l'équipe de travail |  | 5d | 2017-11-28 | 2017-12-04 | 7 | 2017-12-12 | 2017-12-18 | 5d | 2017-11-28 | 2017-12-04 | 0d |  |  | Directeur Qualité; Exécutif; Gestionnaire de projet; Inégnieur Sr; Technicien de projet | 200h |
| 10 | 3.4 | Procéder à la rencontre de démarrage du projet |  | 1d | 2017-12-05 | 2017-12-05 | 9, 8 | 2017-12-19 | 2017-12-19 | 1d | 2017-12-05 | 2017-12-05 | 0d |  |  | Acheteur; Directeur Achat; Directeur Qualité; Exécutif; Gestionnaire de projet; Inégnieur Jr; Inégnieur Sr; Inspecteur Qualité; Marketing; Technicien de projet | 80h |
| 11 | 3.5 | Début du prototypage | milestone | 0d | 2017-12-05 | 2017-12-05 | 10 |  |  |  | 2017-12-05 | 2017-12-05 | 0d |  | 2017-12-22 |  |  |
| 12 | 4 | **Planification du projet** |  | 256d | 2017-12-06 | 2018-11-28 |  | 2017-11-13 | 2019-02-11 | 326d? | 2017-12-06 | 2018-11-23 | 0d |  |  |  | 6840h |
| 13 | 4.1 | **Prototype 1** |  | 87d | 2017-12-06 | 2018-04-05 |  | 2017-12-20 | 2018-05-04 | 98d | 2017-12-06 | 2018-04-04 | 0d |  |  |  | 2280h |
| 14 | 4.1.1 | **Approvisionnement** |  | 20d | 2017-12-06 | 2018-01-02 |  | 2017-12-20 | 2018-01-23 | 25d | 2017-12-06 | 2018-01-02 | 0d |  |  |  | 360h |
| 15 | 4.1.1.1 | Développer les plans de matières premières |  | 5d | 2017-12-06 | 2017-12-12 | 11 | 2017-12-20 | 2017-12-26 | 5d | 2017-12-06 | 2017-12-12 | 10d |  |  | Acheteur; Inégnieur Sr | 80h |
| 16 | 4.1.1.2 | Faire un appel d'offre sur le marché |  | 15d | 2017-12-06 | 2017-12-26 | 11 | 2017-12-27 | 2018-01-16 | 15d | 2017-12-06 | 2017-12-26 | 0d |  |  | Acheteur | 120h |
| 17 | 4.1.1.3 | Sélectionner le fournisseur |  | 5d | 2017-12-27 | 2018-01-02 | 16, 15 | 2018-01-17 | 2018-01-23 | 5d | 2017-12-27 | 2018-01-02 | 0d |  |  | Acheteur; Directeur Achat; Gestionnaire de projet; Inégnieur Sr | 160h |
| 18 | 4.1.2 | **Ingénierie de produit** |  | 13d | 2017-12-06 | 2017-12-22 |  | 2017-12-20 | 2018-01-16 | 20d | 2017-12-06 | 2018-01-02 | 7d |  |  |  | 200h |
| 19 | 4.1.2.1 | Développer le design préliminaire |  | 10d | 2017-12-06 | 2017-12-19 | 10 | 2017-12-20 | 2018-01-02 | 10d | 2017-12-06 | 2017-12-19 | 7d | 0d |  | Inégnieur Jr | 80h |
| 20 | 4.1.2.2 | Compléter l'étude de faisabilité |  | 5d | 2017-12-18 | 2017-12-22 | 19FS-2d | 2018-01-03 | 2018-01-09 | 5d | 2017-12-20 | 2017-12-26 | 7d | 0d |  | Inégnieur Jr; Inégnieur Sr | 80h |
| 21 | 4.1.2.3 | Élaborer le processus de fabrication du prototype |  | 5d | 2017-12-18 | 2017-12-22 | 20SS | 2018-01-10 | 2018-01-16 | 5d | 2017-12-27 | 2018-01-02 | 7d |  |  | Inégnieur Sr | 40h |
| 22 | 4.1.3 | **Production** |  | 46d | 2018-01-03 | 2018-03-07 |  | 2018-01-24 | 2018-04-05 | 52d | 2018-01-03 | 2018-03-06 | 0d |  |  |  | 1376h |
| 23 | 4.1.3.1 | Assembler le matériel nécessaire |  | 10d | 2018-01-03 | 2018-01-16 | 17, 21 | 2018-01-24 | 2018-02-13 | 15d | 2018-01-03 | 2018-01-16 | 0d |  |  | Gestionnaire de projet; Inégnieur Jr; Technicien de projet; Acheteur; Responsable Production | 400h |
| 24 | 4.1.3.2 | Développer le processus de production |  | 5d | 2018-01-17 | 2018-01-23 | 23 | 2018-02-14 | 2018-02-20 | 5d | 2018-01-17 | 2018-01-23 | 0d |  |  | Inégnieur Jr; Inégnieur Sr; Responsable Production; Technicien de projet | 160h |
| 25 | 4.1.3.3 | Faire les changements nécessaires à la production |  | 10d | 2018-01-24 | 2018-02-06 | 24 | 2018-02-21 | 2018-03-06 | 10d | 2018-01-24 | 2018-02-06 | 0d |  |  | Inégnieur Jr; Responsable Production | 160h |
| 26 | 4.1.3.4 | Compléter le prototype |  | 20d | 2018-02-07 | 2018-03-06 | 25 | 2018-03-07 | 2018-04-03 | 20d | 2018-02-07 | 2018-03-06 | 0d |  |  | Gestionnaire de projet; Inégnieur Jr; Responsable Production; Technicien de projet | 640h |

Notes:
- 16: Risque d'avoir un coût plus élevé sur les matières premières en ayant la demande sur le marché plus tôt
- 23: 10 jours estimé sans problème qualité du fournisseur, sinon, nous allons prendre 15 jours

| ID | WBS | Task | Type | Duration | Start | Finish | Predecessors | Baseline start | Baseline finish | Baseline duration | Baseline 1 start | Baseline 1 finish | Total slack | Free slack | Resources | Work |
| --- | --- | --- | --- | --- | --- | --- | --- | --- | --- | --- | --- | --- | --- | --- | --- | --- |
| 27 | 4.1.3.5 | **Qualité** |  | 2d | 2018-03-06 | 2018-03-07 |  | 2018-04-04 | 2018-04-05 | 2d | 2018-03-05 | 2018-03-06 | 0d |  |  | 16h |
| 28 | 4.1.3.5.1 | Inspecter le produit |  | 2d | 2018-03-06 | 2018-03-07 | 26FF+1d | 2018-04-04 | 2018-04-05 | 2d | 2018-03-05 | 2018-03-06 | 0d |  | Inspecteur Qualité | 16h |
| 29 | 4.1.3.5.2 | Approuver le produit pour expédition au client | milestone | 0d | 2018-03-07 | 2018-03-07 | 28 | 2018-04-05 | 2018-04-05 | 0d | 2018-03-06 | 2018-03-06 | 0d |  | Inspecteur Qualité |  |
| 30 | 4.1.4 | **Marketing** |  | 21d | 2018-03-08 | 2018-04-05 |  | 2018-04-06 | 2018-05-04 | 21d | 2018-03-07 | 2018-04-04 | 0d |  |  | 344h |
| 31 | 4.1.4.1 | Élaborer le plan marketing |  | 10d | 2018-03-08 | 2018-03-21 | 19, 29 | 2018-04-06 | 2018-04-19 | 10d | 2018-03-07 | 2018-03-20 | 0d |  | Gestionnaire de projet; Marketing | 160h |
| 32 | 4.1.4.2 | Présenter le prototype au client |  | 1d | 2018-03-22 | 2018-03-22 | 31 | 2018-04-20 | 2018-04-20 | 1d | 2018-03-21 | 2018-03-21 | 0d |  | Gestionnaire de projet; Inégnieur Sr; Marketing | 24h |
| 33 | 4.1.4.3 | Aviser des changements recquis |  | 5d | 2018-03-23 | 2018-03-29 | 32 | 2018-04-23 | 2018-04-27 | 5d | 2018-03-22 | 2018-03-28 | 0d |  | Gestionnaire de projet; Inégnieur Sr | 80h |
| 34 | 4.1.4.4 | Compléter le rapport du feedback client |  | 5d | 2018-03-30 | 2018-04-05 | 33 | 2018-04-30 | 2018-05-04 | 5d | 2018-03-29 | 2018-04-04 | 5d | 0d | Marketing; Inégnieur Sr | 80h |
| 35 | 4.2 | **Prototype 2** |  | 87d | 2018-03-30 | 2018-07-30 |  | 2018-04-30 | 2018-09-19 | 103d | 2018-03-29 | 2018-07-26 | 0d |  |  | 2280h |
| 36 | 4.2.1 | **Approvisionnement** |  | 20d | 2018-03-30 | 2018-04-26 |  | 2018-05-07 | 2018-06-08 | 25d | 2018-03-29 | 2018-04-25 | 0d |  |  | 360h |
| 37 | 4.2.1.1 | Développer les plans de matières premières |  | 5d | 2018-04-06 | 2018-04-12 | 33, 34 | 2018-05-07 | 2018-05-11 | 5d | 2018-04-05 | 2018-04-11 | 5d |  | Acheteur; Inégnieur Sr | 80h |
| 38 | 4.2.1.2 | Faire un appel d'offre sur le marché |  | 15d | 2018-03-30 | 2018-04-19 | 33 | 2018-05-14 | 2018-06-01 | 15d | 2018-03-29 | 2018-04-18 | 0d |  | Acheteur | 120h |
| 39 | 4.2.1.3 | Sélectionner le fournisseur |  | 5d | 2018-04-20 | 2018-04-26 | 38, 37 | 2018-06-04 | 2018-06-08 | 5d | 2018-04-19 | 2018-04-25 | 0d |  | Acheteur; Directeur Achat; Gestionnaire de projet; Inégnieur Sr | 160h |
| 40 | 4.2.2 | **Ingénierie de produit** |  | 13d | 2018-03-30 | 2018-04-17 |  | 2018-04-30 | 2018-05-25 | 20d | 2018-03-29 | 2018-04-25 | 7d |  |  | 200h |
| 41 | 4.2.2.1 | Développer le design préliminaire |  | 10d | 2018-03-30 | 2018-04-12 | 33 | 2018-04-30 | 2018-05-11 | 10d | 2018-03-29 | 2018-04-11 | 7d | 0d | Inégnieur Jr | 80h |
| 42 | 4.2.2.2 | Compléter l'étude de faisabilité |  | 5d | 2018-04-11 | 2018-04-17 | 41FS-2d | 2018-05-14 | 2018-05-18 | 5d | 2018-04-12 | 2018-04-18 | 7d | 0d | Inégnieur Jr; Inégnieur Sr | 80h |
| 43 | 4.2.2.3 | Élaborer le processus de fabrication du prototype |  | 5d | 2018-04-11 | 2018-04-17 | 42SS | 2018-05-21 | 2018-05-25 | 5d | 2018-04-19 | 2018-04-25 | 7d |  | Inégnieur Sr | 40h |
| 44 | 4.2.3 | **Production** |  | 46d | 2018-04-27 | 2018-06-29 |  | 2018-06-11 | 2018-08-21 | 52d | 2018-04-26 | 2018-06-27 | 0d |  |  | 1376h |
| 45 | 4.2.3.1 | Assembler le matériel nécessaire |  | 10d | 2018-04-27 | 2018-05-10 | 39, 43 | 2018-06-11 | 2018-06-29 | 15d | 2018-04-26 | 2018-05-09 | 0d |  | Gestionnaire de projet; Inégnieur Jr; Technicien de projet; Acheteur; Responsable Production | 400h |
| 46 | 4.2.3.2 | Développer le processus de production |  | 5d | 2018-05-11 | 2018-05-17 | 45 | 2018-07-02 | 2018-07-06 | 5d | 2018-05-10 | 2018-05-16 | 0d |  | Inégnieur Jr; Inégnieur Sr; Responsable Production; Technicien de projet | 160h |
| 47 | 4.2.3.3 | Faire les changements nécessaires à la production |  | 10d | 2018-05-18 | 2018-05-31 | 46 | 2018-07-09 | 2018-07-20 | 10d | 2018-05-17 | 2018-05-30 | 0d |  | Inégnieur Jr; Responsable Production | 160h |
| 48 | 4.2.3.4 | Compléter le prototype |  | 20d | 2018-06-01 | 2018-06-28 | 47 | 2018-07-23 | 2018-08-17 | 20d | 2018-05-31 | 2018-06-27 | 0d |  | Gestionnaire de projet; Inégnieur Jr; Responsable Production; Technicien de projet | 640h |
| 49 | 4.2.3.5 | **Qualité** |  | 2d | 2018-06-28 | 2018-06-29 |  | 2018-08-20 | 2018-08-21 | 2d | 2018-06-26 | 2018-06-27 | 0d |  |  | 16h |
| 50 | 4.2.3.5.1 | Inspecter le produit |  | 2d | 2018-06-28 | 2018-06-29 | 48FF+1d | 2018-08-20 | 2018-08-21 | 2d | 2018-06-26 | 2018-06-27 | 0d |  | Inspecteur Qualité | 16h |
| 51 | 4.2.3.5.2 | Approuver le produit pour expédition au client | milestone | 0d | 2018-06-29 | 2018-06-29 | 50 | 2018-08-21 | 2018-08-21 | 0d | 2018-06-27 | 2018-06-27 | 0d |  | Inspecteur Qualité |  |

Notes:
- 38: Risque d'avoir un coût plus élevé sur les matières premières en ayant la demande sur le marché plus tôt
- 45: 10 jours estimé sans problème qualité du fournisseur, sinon, nous allons prendre 15 jours

| ID | WBS | Task | Type | Duration | Start | Finish | Predecessors | Baseline start | Baseline finish | Baseline duration | Baseline 1 start | Baseline 1 finish | Total slack | Free slack | Deadline | Resources | Work |
| --- | --- | --- | --- | --- | --- | --- | --- | --- | --- | --- | --- | --- | --- | --- | --- | --- | --- |
| 52 | 4.2.4 | **Marketing** |  | 21d | 2018-07-02 | 2018-07-30 |  | 2018-08-22 | 2018-09-19 | 21d | 2018-06-28 | 2018-07-26 | 0d |  |  |  | 344h |
| 53 | 4.2.4.1 | Élaborer le plan marketing |  | 10d | 2018-07-02 | 2018-07-13 | 39, 51 | 2018-08-22 | 2018-09-04 | 10d | 2018-06-28 | 2018-07-11 | 0d |  |  | Gestionnaire de projet; Marketing | 160h |
| 54 | 4.2.4.2 | Présenter le prototype au client |  | 1d | 2018-07-16 | 2018-07-16 | 53 | 2018-09-05 | 2018-09-05 | 1d | 2018-07-12 | 2018-07-12 | 0d |  |  | Gestionnaire de projet; Inégnieur Sr; Marketing | 24h |
| 55 | 4.2.4.3 | Aviser des changements recquis |  | 5d | 2018-07-17 | 2018-07-23 | 54 | 2018-09-06 | 2018-09-12 | 5d | 2018-07-13 | 2018-07-19 | 0d |  |  | Gestionnaire de projet; Inégnieur Sr | 80h |
| 56 | 4.2.4.4 | Compléter le rapport du feedback client |  | 5d | 2018-07-24 | 2018-07-30 | 55 | 2018-09-13 | 2018-09-19 | 5d | 2018-07-20 | 2018-07-26 | 5d | 0d |  | Marketing; Inégnieur Sr | 80h |
| 57 | 4.3 | **Prototype Final** |  | 92d | 2018-07-24 | 2018-11-28 |  | 2017-11-13 | 2019-02-11 | 326d? | 2018-07-20 | 2018-11-23 | 0d |  |  |  | 2280h |
| 58 | 4.3.1 | **Approvisionnement** |  | 20d | 2018-07-24 | 2018-08-20 |  | 2018-09-20 | 2018-10-24 | 25d | 2018-07-20 | 2018-08-16 | 0d |  |  |  | 360h |
| 59 | 4.3.1.1 | Développer les plans de matières premières |  | 5d | 2018-07-31 | 2018-08-06 | 55, 56 | 2018-09-20 | 2018-09-26 | 5d | 2018-07-27 | 2018-08-02 | 5d |  |  | Acheteur; Inégnieur Sr | 80h |
| 60 | 4.3.1.2 | Faire un appel d'offre sur le marché |  | 15d | 2018-07-24 | 2018-08-13 | 55 | 2018-09-27 | 2018-10-17 | 15d | 2018-07-20 | 2018-08-09 | 0d |  |  | Acheteur | 120h |
| 61 | 4.3.1.3 | Sélectionner le fournisseur |  | 5d | 2018-08-14 | 2018-08-20 | 60, 59 | 2018-10-18 | 2018-10-24 | 5d | 2018-08-10 | 2018-08-16 | 0d |  |  | Acheteur; Directeur Achat; Gestionnaire de projet; Inégnieur Sr | 160h |
| 62 | 4.3.2 | **Ingénierie de produit** |  | 13d | 2018-07-24 | 2018-08-09 |  | 2018-09-13 | 2018-10-10 | 20d | 2018-07-20 | 2018-08-16 | 7d |  |  |  | 200h |
| 63 | 4.3.2.1 | Développer le design préliminaire |  | 10d | 2018-07-24 | 2018-08-06 | 55 | 2018-09-13 | 2018-09-26 | 10d | 2018-07-20 | 2018-08-02 | 7d | 0d |  | Inégnieur Jr | 80h |
| 64 | 4.3.2.2 | Compléter l'étude de faisabilité |  | 5d | 2018-08-03 | 2018-08-09 | 63FS-2d | 2018-09-27 | 2018-10-03 | 5d | 2018-08-03 | 2018-08-09 | 7d | 0d |  | Inégnieur Jr; Inégnieur Sr | 80h |
| 65 | 4.3.2.3 | Élaborer le processus de fabrication du prototype |  | 5d | 2018-08-03 | 2018-08-09 | 64SS | 2018-10-04 | 2018-10-10 | 5d | 2018-08-10 | 2018-08-16 | 7d |  |  | Inégnieur Sr | 40h |
| 66 | 4.3.3 | **Production** |  | 45d | 2018-08-21 | 2018-10-22 |  | 2018-10-25 | 2019-01-02 | 50d | 2018-08-17 | 2018-10-18 | 0d |  |  |  | 1360h |
| 67 | 4.3.3.1 | Assembler le matériel nécessaire |  | 10d | 2018-08-21 | 2018-09-03 | 61, 65 | 2018-10-25 | 2018-11-14 | 15d | 2018-08-17 | 2018-08-30 | 0d |  |  | Gestionnaire de projet; Inégnieur Jr; Technicien de projet; Acheteur; Responsable Production | 400h |
| 68 | 4.3.3.2 | Développer le processus de production |  | 5d | 2018-09-04 | 2018-09-10 | 67 | 2018-11-15 | 2018-11-21 | 5d | 2018-08-31 | 2018-09-06 | 0d |  |  | Inégnieur Jr; Inégnieur Sr; Responsable Production; Technicien de projet | 160h |
| 69 | 4.3.3.3 | Faire les changements nécessaires à la production |  | 10d | 2018-09-11 | 2018-09-24 | 68 | 2018-11-22 | 2018-12-05 | 10d | 2018-09-07 | 2018-09-20 | 0d |  |  | Inégnieur Jr; Responsable Production | 160h |
| 70 | 4.3.3.4 | Compléter le prototype |  | 20d | 2018-09-25 | 2018-10-22 | 69 | 2018-12-06 | 2019-01-02 | 20d | 2018-09-21 | 2018-10-18 | 0d |  |  | Gestionnaire de projet; Inégnieur Jr; Responsable Production; Technicien de projet | 640h |
| 71 | 4.3.4 | **Qualité** |  | 2d | 2018-10-22 | 2018-10-23 |  | 2017-11-13 | 2019-01-04 | 300d? | 2018-10-17 | 2018-10-18 | 0d |  |  |  | 16h |
| 72 | 4.3.4.1 | Inspecter le produit |  | 2d | 2018-10-22 | 2018-10-23 | 70FF+1d | 2019-01-03 | 2019-01-04 | 2d | 2018-10-17 | 2018-10-18 | 0d |  |  | Inspecteur Qualité | 16h |
| 73 | 4.3.4.2 | Approuver le produit pour expédition au client | milestone | 0d | 2018-10-23 | 2018-10-23 | 72 | 2019-01-04 | 2019-01-04 | 0d | 2018-10-18 | 2018-10-18 | 0d |  |  | Inspecteur Qualité |  |
| 74 | 4.3.5 | **Marketing** |  | 26d | 2018-10-24 | 2018-11-28 |  | 2019-01-07 | 2019-02-11 | 26d | 2018-10-19 | 2018-11-23 | 0d |  |  |  | 344h |
| 75 | 4.3.5.1 | Élaborer le plan marketing |  | 10d | 2018-10-24 | 2018-11-06 | 55, 73 | 2019-01-07 | 2019-01-18 | 10d | 2018-10-19 | 2018-11-01 | 0d |  |  | Gestionnaire de projet; Marketing | 160h |
| 76 | 4.3.5.2 | Tampon - Attente interne |  | 5d | 2018-11-07 | 2018-11-13 | 75 |  |  |  | 2018-11-02 | 2018-11-08 | 0d |  |  |  |  |
| 77 | 4.3.5.3 | Présenter le prototype au client |  | 1d | 2018-11-14 | 2018-11-14 | 76 | 2019-01-28 | 2019-01-28 | 1d | 2018-11-09 | 2018-11-09 | 0d |  |  | Gestionnaire de projet; Inégnieur Sr; Marketing | 24h |
| 78 | 4.3.5.4 | Aviser des changements recquis |  | 5d | 2018-11-15 | 2018-11-21 | 77 | 2019-01-29 | 2019-02-04 | 5d | 2018-11-12 | 2018-11-16 | 0d |  |  | Gestionnaire de projet; Inégnieur Sr | 80h |
| 79 | 4.3.5.5 | Compléter le rapport du feedback client |  | 5d | 2018-11-22 | 2018-11-28 | 78 | 2019-02-05 | 2019-02-11 | 5d | 2018-11-19 | 2018-11-23 | 0d |  |  | Marketing; Inégnieur Sr | 80h |
| 80 | 4.3.6 | Approbation du client du prototype et transfer à la production finale | milestone | 0d | 2018-11-28 | 2018-11-28 | 79 | 2019-02-11 | 2019-02-11 | 0d | 2018-11-23 | 2018-11-23 | 0d |  | 2019-01-28 | Directeur Achat; Directeur Qualité; Exécutif; Gestionnaire de projet; Inégnieur Sr; Responsable Production |  |

Notes:
- 60: Risque d'avoir un coût plus élevé sur les matières premières en ayant la demande sur le marché plus tôt
- 67: 10 jours estimé sans problème qualité du fournisseur, sinon, nous allons prendre 15 jours

| ID | WBS | Task | Type | Duration | Start | Finish | Predecessors | Baseline start | Baseline finish | Baseline duration | Baseline 1 start | Baseline 1 finish | Total slack | Free slack | Deadline | Resources | Work |
| --- | --- | --- | --- | --- | --- | --- | --- | --- | --- | --- | --- | --- | --- | --- | --- | --- | --- |
| 81 | 5 | **Execution** |  | 87d | 2018-11-26 | 2019-03-26 |  | 2019-02-07 | 2019-06-07 | 87d | 2018-11-21 | 2019-03-21 | 0d |  |  |  | 4672h |
| 82 | 5.1 | **Ingénierie de produit** |  | 60d | 2018-11-29 | 2019-02-20 |  | 2019-02-12 | 2019-05-06 | 60d | 2018-11-26 | 2019-02-15 | 24d |  |  |  | 1480h |
| 83 | 5.1.1 | Finaliser les plans de produits |  | 15d | 2018-11-29 | 2018-12-19 | 80 | 2019-02-12 | 2019-03-04 | 15d | 2018-11-26 | 2018-12-14 | 24d | 0d |  | Inégnieur Jr; Inégnieur Sr | 240h |
| 84 | 5.1.2 | Préprarer la cédule de maintenance |  | 10d | 2018-12-20 | 2019-01-02 | 83 | 2019-03-05 | 2019-03-18 | 10d | 2018-12-17 | 2018-12-28 | 24d | 0d |  | Inégnieur Jr; Technicien de projet | 160h |
| 85 | 5.1.3 | Élaborer le processus du fabrication |  | 20d | 2019-01-03 | 2019-01-30 | 84 | 2019-03-19 | 2019-04-15 | 20d | 2018-12-31 | 2019-01-25 | 24d | 0d |  | Inégnieur Jr; Responsable Production; Technicien de projet | 480h |
| 86 | 5.1.4 | Formation des techniciens procédés |  | 15d | 2019-01-31 | 2019-02-20 | 85 | 2019-04-16 | 2019-05-06 | 15d | 2019-01-28 | 2019-02-15 | 24d |  |  | Inégnieur Jr; Inégnieur Sr; Technicien de projet | 360h |
| 87 | 5.1.5 | Compléter fichier du produit pour transfer à la production |  | 10d | 2019-01-31 | 2019-02-13 | 85 | 2019-04-16 | 2019-04-29 | 10d | 2019-01-28 | 2019-02-08 | 29d |  |  | Directeur Qualité; Gestionnaire de projet; Inégnieur Sr | 240h |
| 88 | 5.2 | **Qualité** |  | 16d | 2018-11-29 | 2018-12-20 |  | 2019-02-12 | 2019-03-05 | 16d | 2018-11-26 | 2018-12-17 | 58d |  |  |  | 408h |
| 89 | 5.2.1 | Compléter l'approbation client du produit |  | 1d | 2018-11-29 | 2018-11-29 | 80 | 2019-02-12 | 2019-02-12 | 1d | 2018-11-26 | 2018-11-26 | 58d | 0d |  | Directeur Qualité | 8h |
| 90 | 5.2.2 | Élaborer les critères d'inspection |  | 5d | 2018-11-30 | 2018-12-06 | 89 | 2019-02-13 | 2019-02-19 | 5d | 2018-11-27 | 2018-12-03 | 58d | 0d |  | Directeur Qualité; Inspecteur Qualité | 80h |
| 91 | 5.2.3 | Formation des inspecteurs qualités |  | 10d | 2018-12-07 | 2018-12-20 | 90 | 2019-02-20 | 2019-03-05 | 10d | 2018-12-04 | 2018-12-17 | 58d | 29d |  | Directeur Qualité; Inspecteur Qualité; Technicien de projet; Gestionnaire des Ressources Humaines | 320h |
| 92 | 5.3 | **Ressources humaines** |  | 30d | 2018-11-29 | 2019-01-09 |  | 2019-02-12 | 2019-03-25 | 30d | 2018-11-26 | 2019-01-04 | 54d |  |  |  | 1120h |
| 93 | 5.3.1 | Embaucher les nouveaux opérateurs |  | 20d | 2018-11-29 | 2018-12-26 | 80 | 2019-02-12 | 2019-03-11 | 20d | 2018-11-26 | 2018-12-21 | 54d | 0d |  | Gestionnaire des Ressources Humaines | 160h |
| 94 | 5.3.2 | Développer le plan de formation |  | 15d | 2018-11-29 | 2018-12-19 | 93SS | 2019-02-12 | 2019-03-04 | 15d | 2018-11-26 | 2018-12-14 | 54d | 0d |  | Gestionnaire des Ressources Humaines; Gestionnaire de projet; Inégnieur Sr; Responsable Production | 480h |
| 95 | 5.3.3 | Former les nouveaux opérateurs |  | 15d | 2018-12-20 | 2019-01-09 | 94 | 2019-03-05 | 2019-03-25 | 15d | 2018-12-17 | 2019-01-04 | 54d |  |  | Gestionnaire des Ressources Humaines; Inégnieur Jr; Inspecteur Qualité; Responsable Production | 480h |
| 96 | 5.4 | **Approvisionnement** |  | 87d | 2018-11-26 | 2019-03-26 |  | 2019-02-07 | 2019-06-07 | 87d | 2018-11-21 | 2019-03-21 | 0d |  |  |  | 1504h |
| 97 | 5.4.1 | Développer les plans finaux des requis de matières premières |  | 10d | 2018-11-26 | 2018-12-07 | 80FS-3d | 2019-02-07 | 2019-02-20 | 10d | 2018-11-21 | 2018-12-04 | 0d |  |  | Acheteur; Directeur Achat | 160h |
| 98 | 5.4.2 | Faire appel d'offres |  | 15d | 2018-12-10 | 2018-12-28 | 97 | 2019-02-21 | 2019-03-13 | 15d | 2018-12-05 | 2018-12-25 | 0d |  |  | Acheteur | 120h |
| 99 | 5.4.3 | Choisir les fournisseurs |  | 15d | 2018-12-31 | 2019-01-18 | 98 | 2019-03-14 | 2019-04-03 | 15d | 2018-12-26 | 2019-01-15 | 0d |  |  | Directeur Achat; Directeur Qualité; Gestionnaire de projet; Inégnieur Sr; Responsable Production | 600h |
| 100 | 5.4.4 | Développer le contrat |  | 20d | 2019-01-21 | 2019-02-15 | 99 | 2019-04-04 | 2019-05-01 | 20d | 2019-01-16 | 2019-02-12 | 0d |  |  | Acheteur | 160h |
| 101 | 5.4.5 | Revoir le contrat par le département législatif |  | 20d | 2019-02-18 | 2019-03-15 | 100 | 2019-05-02 | 2019-05-29 | 20d | 2019-02-13 | 2019-03-12 | 0d |  |  | Legal | 160h |
| 102 | 5.4.6 | Signer et approuver le contrat |  | 5d | 2019-03-18 | 2019-03-22 | 101 | 2019-05-30 | 2019-06-05 | 5d | 2019-03-13 | 2019-03-19 | 0d |  |  | Directeur Achat; Directeur Qualité; Exécutif; Gestionnaire de projet; Inégnieur Sr; Responsable Production | 240h |
| 103 | 5.4.7 | Mettre en place le plan d'approvisionnement |  | 2d | 2019-03-25 | 2019-03-26 | 102, 107 | 2019-06-06 | 2019-06-07 | 2d | 2019-03-20 | 2019-03-21 | 0d |  |  | Acheteur; Gestionnaire de projet; Responsable Production; Technicien de projet | 64h |
| 104 | 5.5 | **Département de production** |  | 69d | 2018-12-19 | 2019-03-26 |  | 2019-03-04 | 2019-06-07 | 69d | 2018-12-14 | 2019-03-21 | 0d |  |  |  | 160h |
| 105 | 5.5.1 | Accepter le design de produit | milestone | 0d | 2018-12-19 | 2018-12-19 | 83 | 2019-03-04 | 2019-03-04 | 0d | 2018-12-14 | 2018-12-14 | 33d |  | 2019-02-04 | Responsable Production |  |
| 106 | 5.5.2 | Développer plan de production |  | 10d | 2019-01-31 | 2019-02-13 | 85, 91 | 2019-04-16 | 2019-04-29 | 10d | 2019-01-28 | 2019-02-08 | 29d |  |  | Responsable Production; Inégnieur Jr | 160h |
| 107 | 5.5.3 | Approuver le plan d'approvisionnement | milestone | 0d | 2019-03-22 | 2019-03-22 | 102 | 2019-06-05 | 2019-06-05 | 0d | 2019-03-19 | 2019-03-19 | 0d |  |  | Responsable Production |  |
| 108 | 5.5.4 | Projet transféré aux opérations et début de la prouction | milestone | 0d | 2019-03-26 | 2019-03-26 | 107, 103, 95 | 2019-06-07 | 2019-06-07 | 0d | 2019-03-21 | 2019-03-21 | 0d |  |  | Responsable Production |  |
| 109 | 6 | Fin de projet | milestone | 0d | 2019-03-26 | 2019-03-26 | 86, 87, 105, 106, 108 | 2019-06-07 | 2019-06-07 | 0d | 2019-03-21 | 2019-03-21 | 0d |  |  |  |  |

Notes:
- 97: Nous allons commencer les plans 3 jours avant l'approbation
