# Modèle de projet avec durée, prédécesseur et ressources

Schedule from MS Project, 2021-03-31 to 2022-02-21, 7 hours a day.

## Calendars

- Standard: Mon-Fri 09:00-12:00, 14:00-18:00; Sat-Sun off.

## Resources

| Resource |
| --- |
| Jean Coriveau |
| Chef projet |
| Ingénieur mécanique |
| Ingénieur électrique |
| Chargé entreposage |
| Contremaître |
| Rédacteur clauses |
| Rédacteur technique |
| Auditeur |

## Schedule

| ID | WBS | Task | Type | Duration | Start | Finish | Predecessors | Total slack | Resources | Work |
| --- | --- | --- | --- | --- | --- | --- | --- | --- | --- | --- |
| 1 | 1 | **Design** |  | 29d | 2021-03-31 | 2021-05-10 |  | 0d |  | 560h |
| 2 | 1.1 | Définir les besoins |  | 15d | 2021-03-31 | 2021-04-20 |  | 0d | Chef projet; Ingénieur électrique; Ingénieur mécanique; Jean Coriveau | 420h |
| 3 | 1.2 | Valider les règlements en vigueur |  | 2d | 2021-04-21 | 2021-04-22 | 2 | 0d | Jean Coriveau | 14h |
| 4 | 1.3 | Valider les écarts et prendre les actions correctives |  | 3d | 2021-04-23 | 2021-04-27 | 3 | 0d | Ingénieur électrique; Ingénieur mécanique; Chargé entreposage | 63h |
| 5 | 1.4 | Écrire une recommandation |  | 5d | 2021-04-28 | 2021-05-04 | 4 | 0d | Rédacteur technique | 35h |
| 6 | 1.5 | Approuver la recommandation |  | 4d | 2021-05-05 | 2021-05-10 | 5 | 0d | Jean Coriveau | 28h |
| 7 | 2 | **Appel de proposition** |  | 87d | 2021-05-11 | 2021-09-08 |  | 0d |  | 1218h |
| 8 | 2.1 | Élaborer les clauses techniques |  | 5d | 2021-05-11 | 2021-05-17 | 6 | 10d | Rédacteur clauses; Jean Coriveau | 70h |
| 9 | 2.2 | Élaborer les clauses particulières et commerciales |  | 15d | 2021-05-11 | 2021-05-31 | 6 | 0d | Rédacteur technique; Jean Coriveau | 210h |
| 10 | 2.3 | Faire la recontre d'appropriation |  | 1d | 2021-06-01 | 2021-06-01 | 9, 8 | 0d | Jean Coriveau; Chargé entreposage; Chef projet; Contremaître; Ingénieur électrique; Ingénieur mécanique; Rédacteur clauses; Rédacteur technique | 56h |
| 11 | 2.4 | Approuver les clauses | milestone | 0d | 2021-06-01 | 2021-06-01 | 10 | 0d | Jean Coriveau |  |
| 12 | 2.5 | Approuver l'analyse budgétaire | milestone | 0d | 2021-06-01 | 2021-06-01 | 11 | 0d | Chef projet |  |
| 13 | 2.6 | Lancer l'appel de proposition |  | 1d | 2021-06-02 | 2021-06-02 | 12 | 0d | Chef projet | 7h |
| 14 | 2.7 | Durée appel de proposition |  | 25d | 2021-06-03 | 2021-07-07 | 13 | 0d |  |  |
| 15 | 2.8 | Rencontrer les entrepreneurs intéressés |  | 5d | 2021-07-08 | 2021-07-14 | 14 | 0d | Chef projet; Jean Coriveau | 70h |
| 16 | 2.9 | Fermer l'appel de proposition | milestone | 0d | 2021-07-14 | 2021-07-14 | 15 | 0d | Chef projet |  |
| 17 | 2.10 | **Analyser les propositions** |  | 30d | 2021-07-15 | 2021-08-25 |  | 0d |  | 735h |
| 18 | 2.10.1 | Analyser Techniquement |  | 15d | 2021-07-15 | 2021-08-04 | 16 | 0d | Chef projet; Ingénieur électrique; Ingénieur mécanique; Rédacteur technique | 420h |
| 19 | 2.10.2 | Analyser commercialement |  | 15d | 2021-08-05 | 2021-08-25 | 18 | 0d | Chef projet; Contremaître; Jean Coriveau | 315h |
| 20 | 2.11 | Écrire la recommandation |  | 5d | 2021-08-26 | 2021-09-01 | 19 | 0d | Rédacteur clauses | 35h |
| 21 | 2.12 | Approuver la recommandation | milestone | 0d | 2021-09-01 | 2021-09-01 | 20 | 0d | Jean Coriveau |  |
| 22 | 2.13 | Octroyer le contrat |  | 5d | 2021-09-02 | 2021-09-08 | 21 | 0d | Chef projet | 35h |
| 23 | 3 | **Fabrication de l'équipement** |  | 57d | 2021-09-09 | 2021-11-26 |  | 0d |  | 588h |
| 24 | 3.1 | Définir les dessins de fabrication |  | 25d | 2021-09-09 | 2021-10-13 | 22 | 0d | Ingénieur électrique; Ingénieur mécanique | 350h |
| 25 | 3.2 | Approuver les dessins |  | 5d | 2021-10-14 | 2021-10-20 | 24 | 0d | Jean Coriveau | 35h |
| 26 | 3.3 | Réserver plage horaire usine |  | 2d | 2021-10-21 | 2021-10-22 | 25 | 0d | Chef projet; Contremaître | 28h |
| 27 | 3.4 | Lancer la fabrication | milestone | 0d | 2021-10-22 | 2021-10-22 | 26 | 0d | Contremaître |  |

Notes:
- 4: Note: de pas changer la date de fin

| ID | WBS | Task | Duration | Start | Finish | Predecessors | Total slack | Resources | Work |
| --- | --- | --- | --- | --- | --- | --- | --- | --- | --- |
| 28 | 3.5 | **Faire les audits de fabrication** | 5d | 2021-10-25 | 2021-10-29 |  | 0d |  | 35h |
| 29 | 3.5.1 | Audit initial | 1d | 2021-10-25 | 2021-10-25 | 27 | 0d | Auditeur | 7h |
| 30 | 3.5.2 | Audit 25 % | 1d | 2021-10-26 | 2021-10-26 | 29 | 0d | Auditeur | 7h |
| 31 | 3.5.3 | Audit 50 % | 1d | 2021-10-27 | 2021-10-27 | 30 | 0d | Auditeur | 7h |
| 32 | 3.5.4 | Audit 75 % | 1d | 2021-10-28 | 2021-10-28 | 31 | 0d | Auditeur | 7h |
| 33 | 3.5.5 | Audit final | 1d | 2021-10-29 | 2021-10-29 | 32 | 0d | Auditeur | 7h |
| 34 | 3.6 | Approuver les pièces finales | 5d | 2021-11-01 | 2021-11-05 | 33 | 0d | Auditeur | 35h |
| 35 | 3.7 | Expédier les pièces au client | 15d | 2021-11-08 | 2021-11-26 | 34 | 0d | Chargé entreposage | 105h |
| 36 | 4 | **Satisfaction client** | 234d | 2021-03-31 | 2022-02-21 |  | 0d |  | 42h |
| 37 | 4.1 | Rencontrer le client au début de la commande | 1d | 2021-04-21 | 2021-04-21 | 2 | 218d | Chef projet | 7h |
| 38 | 4.2 | Envoyer un questionnaire satisfaction à 25 % | 1d | 2021-04-28 | 2021-04-28 | 4 | 213d | Auditeur | 7h |
| 39 | 4.3 | Rencontrer mensuellement le client | 1d | 2021-05-05 | 2021-05-05 | 5 | 208d | Chef projet | 7h |
| 40 | 4.4 | Faire le suivi après l'expédition avec le client | 1d | 2021-11-29 | 2021-11-29 | 35 | 60d | Jean Coriveau | 7h |
| 41 | 4.5 | Envoyer un questionnaire 1 mois après livraison | 1d | 2022-02-21 | 2022-02-21 | 35FS+60d | 0d | Chef projet | 7h |
| 42 | 4.6 | Téléphoner au client - 6 mois après livraison | 1d | 2021-03-31 | 2021-03-31 |  | 233d | Jean Coriveau | 7h |
