# Projet avec activité en hammock

Schedule from MS Project, 2021-03-31 to 2022-04-25, 7 hours a day.

## Calendars

- Standard: Mon-Fri 09:00-12:00, 14:00-18:00; Sat-Sun off.

## Resources

| Resource |
| --- |
| Jean Coriveau |
| Chef projet |
| Ingénieur mécanique |
| Ingénieur électrique |
| Chargé entreposage |
| Contremaître |
| Rédacteur clauses |
| Rédacteur technique |
| Auditeur |

## Schedule

| ID | WBS | Task | Type | Duration | Start | Finish | Predecessors | Total slack | Free slack | Resources | Work |
| --- | --- | --- | --- | --- | --- | --- | --- | --- | --- | --- | --- |
| 1 | 1 | **Design** |  | 44d | 2021-03-31 | 2021-05-31 |  | 0d |  |  | 980h |
| 2 | 1.1 | Définir les besoins |  | 30d | 2021-03-31 | 2021-05-11 |  | 0d |  | Chef projet; Ingénieur électrique; Ingénieur mécanique; Jean Coriveau | 840h |
| 3 | 1.2 | Valider les règlements en vigueur |  | 2d | 2021-05-12 | 2021-05-13 | 2 | 0d |  | Jean Coriveau | 14h |
| 4 | 1.3 | Valider les écarts et prendre les actions correctives |  | 3d | 2021-05-14 | 2021-05-18 | 3 | 0d |  | Ingénieur électrique; Ingénieur mécanique; Chargé entreposage | 63h |
| 5 | 1.4 | Écrire une recommandation |  | 5d | 2021-05-19 | 2021-05-25 | 4 | 0d |  | Rédacteur technique | 35h |
| 6 | 1.5 | Approuver la recommandation |  | 4d | 2021-05-26 | 2021-05-31 | 5 | 0d |  | Jean Coriveau | 28h |
| 7 | 2 | **Appel de proposition** |  | 117d | 2021-06-01 | 2021-11-10 |  | 0d |  |  | 1218h |
| 8 | 2.1 | Élaborer les clauses techniques |  | 5d | 2021-06-01 | 2021-06-07 | 6 | 10d |  | Rédacteur clauses; Jean Coriveau | 70h |
| 9 | 2.2 | Élaborer les clauses particulières et commerciales |  | 15d | 2021-06-01 | 2021-06-21 | 6 | 0d |  | Rédacteur technique; Jean Coriveau | 210h |
| 10 | 2.3 | Faire la recontre d'appropriation |  | 1d | 2021-06-22 | 2021-06-22 | 9, 8 | 0d |  | Jean Coriveau; Chargé entreposage; Chef projet; Contremaître; Ingénieur électrique; Ingénieur mécanique; Rédacteur clauses; Rédacteur technique | 56h |
| 11 | 2.4 | Activité en Hammock |  | 30d | 2021-06-23 | 2021-08-03 | 10 | 0d |  |  |  |
| 12 | 2.5 | Approuver les clauses | milestone | 0d | 2021-06-22 | 2021-06-22 | 10 | 30d | 0d | Jean Coriveau |  |
| 13 | 2.6 | Approuver l'analyse budgétaire | milestone | 0d | 2021-06-22 | 2021-06-22 | 12 | 30d |  | Chef projet |  |
| 14 | 2.7 | Lancer l'appel de proposition |  | 1d | 2021-08-04 | 2021-08-04 | 13, 11 | 0d |  | Chef projet | 7h |
| 15 | 2.8 | Durée appel de proposition |  | 25d | 2021-08-05 | 2021-09-08 | 14 | 0d |  |  |  |
| 16 | 2.9 | Rencontrer les entrepreneurs intéressés |  | 5d | 2021-09-09 | 2021-09-15 | 15 | 0d |  | Chef projet; Jean Coriveau | 70h |
| 17 | 2.10 | Fermer l'appel de proposition | milestone | 0d | 2021-09-15 | 2021-09-15 | 16 | 0d |  | Chef projet |  |
| 18 | 2.11 | **Analyser les propositions** |  | 30d | 2021-09-16 | 2021-10-27 |  | 0d |  |  | 735h |
| 19 | 2.11.1 | Analyser Techniquement |  | 15d | 2021-09-16 | 2021-10-06 | 17 | 0d |  | Chef projet; Ingénieur électrique; Ingénieur mécanique; Rédacteur technique | 420h |
| 20 | 2.11.2 | Analyser commercialement |  | 15d | 2021-10-07 | 2021-10-27 | 19 | 0d |  | Chef projet; Contremaître; Jean Coriveau | 315h |
| 21 | 2.12 | Écrire la recommandation |  | 5d | 2021-10-28 | 2021-11-03 | 20 | 0d |  | Rédacteur clauses | 35h |
| 22 | 2.13 | Approuver la recommandation | milestone | 0d | 2021-11-03 | 2021-11-03 | 21 | 0d |  | Jean Coriveau |  |
| 23 | 2.14 | Octroyer le contrat |  | 5d | 2021-11-04 | 2021-11-10 | 22 | 0d |  | Chef projet | 35h |
| 24 | 3 | **Fabrication de l'équipement** |  | 57d | 2021-11-11 | 2022-01-28 |  | 0d |  |  | 588h |
| 25 | 3.1 | Définir les dessins de fabrication |  | 25d | 2021-11-11 | 2021-12-15 | 23 | 0d |  | Ingénieur électrique; Ingénieur mécanique | 350h |
| 26 | 3.2 | Approuver les dessins |  | 5d | 2021-12-16 | 2021-12-22 | 25 | 0d |  | Jean Coriveau | 35h |
| 27 | 3.3 | Réserver plage horaire usine |  | 2d | 2021-12-23 | 2021-12-24 | 26 | 0d |  | Chef projet; Contremaître | 28h |
| 28 | 3.4 | Lancer la fabrication | milestone | 0d | 2021-12-24 | 2021-12-24 | 27 | 0d |  | Contremaître |  |

Notes:
- 4: Note: de pas changer la date de fin
- 11: Activité reliée en hammock avec la tâche: Définir les besoins

| ID | WBS | Task | Duration | Start | Finish | Predecessors | Total slack | Resources | Work |
| --- | --- | --- | --- | --- | --- | --- | --- | --- | --- |
| 29 | 3.5 | **Faire les audits de fabrication** | 5d | 2021-12-27 | 2021-12-31 |  | 0d |  | 35h |
| 30 | 3.5.1 | Audit initial | 1d | 2021-12-27 | 2021-12-27 | 28 | 0d | Auditeur | 7h |
| 31 | 3.5.2 | Audit 25 % | 1d | 2021-12-28 | 2021-12-28 | 30 | 0d | Auditeur | 7h |
| 32 | 3.5.3 | Audit 50 % | 1d | 2021-12-29 | 2021-12-29 | 31 | 0d | Auditeur | 7h |
| 33 | 3.5.4 | Audit 75 % | 1d | 2021-12-30 | 2021-12-30 | 32 | 0d | Auditeur | 7h |
| 34 | 3.5.5 | Audit final | 1d | 2021-12-31 | 2021-12-31 | 33 | 0d | Auditeur | 7h |
| 35 | 3.6 | Approuver les pièces finales | 5d | 2022-01-03 | 2022-01-07 | 34 | 0d | Auditeur | 35h |
| 36 | 3.7 | Expédier les pièces au client | 15d | 2022-01-10 | 2022-01-28 | 35 | 0d | Chargé entreposage | 105h |
| 37 | 4 | **Satisfaction client** | 279d | 2021-03-31 | 2022-04-25 |  | 0d |  | 42h |
| 38 | 4.1 | Rencontrer le client au début de la commande | 1d | 2021-05-12 | 2021-05-12 | 2 | 248d | Chef projet | 7h |
| 39 | 4.2 | Envoyer un questionnaire satisfaction à 25 % | 1d | 2021-05-19 | 2021-05-19 | 4 | 243d | Auditeur | 7h |
| 40 | 4.3 | Rencontrer mensuellement le client | 1d | 2021-05-26 | 2021-05-26 | 5 | 238d | Chef projet | 7h |
| 41 | 4.4 | Faire le suivi après l'expédition avec le client | 1d | 2022-01-31 | 2022-01-31 | 36 | 60d | Jean Coriveau | 7h |
| 42 | 4.5 | Envoyer un questionnaire 1 mois après livraison | 1d | 2022-04-25 | 2022-04-25 | 36FS+60d | 0d | Chef projet | 7h |
| 43 | 4.6 | Téléphoner au client - 6 mois après livraison | 1d | 2021-03-31 | 2021-03-31 |  | 278d | Jean Coriveau | 7h |
